How a schedule from an exported table changed from version to version. A marks actual dates.

## Version 1 (saved 2026-08-31)

| ID | Task | Start | Finish |
| --- | --- | --- | --- |
| prj_001 | ฟาร์มสุกรขุนเขาหินซ้อน | 2025-11-01 | 2026-05-05 |
| prj_002 | ฟาร์มสุกรขุนพนัสนิคม | 2025-11-01 | 2026-05-05 |
| prj_003 | ฟาร์มสุกรพันธุ์สระแก้ว | 2025-11-01 | 2026-05-05 |
| prj_004 | ฟาร์มกาญจนบุรี | 2025-08-17 | 2026-03-05 |
| prj_005 | ฟาร์มสุกรขุนโคกมะตูม | 2025-11-01 | 2026-05-05 |
| prj_006 | ฟาร์มสุกรท่าจาม | 2025-11-20 | 2026-05-24 |
| prj_007 | ฟาร์มสุกรบางหนาง (ระนอง) | 2025-11-01 | 2026-05-05 |
| prj_008 | โรงงานไก่ย่างห้าดาวเชียงใหม่ | 2024-02-05 | 2025-12-11 |
| prj_009 | โรงงานข้าววังแดง-2 | 2026-03-01 | 2026-08-19 |
| prj_010 | โรงชำแหละสุกรหนองคาย | 2025-11-01 | 2026-05-05 |
| prj_011 | โรงฟักไข่กบินทร์บุรี3 | 2026-03-01 | 2026-08-19 |
| prj_012 | ฟาร์มไก่รุ่นไข่ นาดี (ปราจีนบุรี) | 2025-09-17 | 2026-04-05 |
| prj_013 | ฟาร์มไก่รุ่นไข่ โพธิ์ประทับช้าง | 2025-09-17 | 2026-04-05 |
| prj_014 | โรงฟักไข่บ้านไร่ | 2026-05-01 | 2026-10-04 |
| prj_015 | โรงงานอาหารสำเร็จรูปหนองจอก-2 | 2025-09-10 | 2026-04-22 |
| prj_016 | โรงงานอาหาร แปรรูปเนื้อเป็ด-ไก่ บางนา | 2026-03-01 | 2026-08-19 |
| prj_017 | โรงงานอาหารสำเร็จรูป สระบุรี | 2026-05-01 | 2026-10-04 |
| prj_018 | โรงงานอาหารสัตว์ท่าเรือ | 2025-12-26 | 2026-09-19 |
| prj_019 | โรงงานอาหารสัตว์หนองแค สระบุรี | 2025-12-26 | 2026-10-11 |
| prj_020 | โรงงานแปรรูปสัตว์น้ำ แกลง (ระยอง) 2 | 2025-07-01 | 2026-03-19 |
| prj_021 | โรงงานข้าวนครหลวง-2 | 2026-03-01 | 2026-07-20 |
| prj_022 | โรงงานแปรรูปสัตว์น้ำ แกลง (ระยอง) 1 | 2025-09-15 | 2026-04-25 |
| prj_023 | ฟาร์มสุกรพันธุ์ระยอง 1 | 2026-07-01 | 2026-12-04 |
| prj_024 | โรงงานชำแหละสุกร บางคล้า | 2025-09-17 | 2026-04-29 |
| prj_025 | โรงชำแหละสุกรปลวกแดง | 2025-08-10 | 2026-01-28 |
| prj_026 | ฟาร์มสุกรพันธุ์ชลบุรี | 2025-08-20 | 2026-02-21 |
| prj_027 | ฟาร์มสุกรพันธุ์รัตภูมิ 2 | 2025-04-02 | 2026-04-05 |
| prj_028 | โรงชำแหละสุกรจอหอ | 2025-04-02 | 2026-04-05 |
| prj_029 | โรงชำแหละสุกรหนองบัวลำภู | 2025-04-02 | 2026-04-05 |
| prj_030 | ฟาร์มบ้านม่วง | 2025-12-01 | 2026-06-04 |
| prj_031 | ฟาร์มสุกรพระยืน | 2025-10-20 | 2026-04-23 |
| prj_032 | โรงงานชำแหละ จันทบุรี (นายายอาม) | 2025-11-01 | 2026-05-05 |
| prj_033 | ฟาร์มหนองคาย | 2025-09-01 | 2026-03-05 |
| prj_034 | CEE-2 | 2025-05-20 | 2026-01-25 |
| prj_035 | โรงงานอาหารแปรรูปมีนบุรี2 | 2025-07-01 | 2026-02-08 |
| prj_036 | โรงงานอาหารสำเร็จรูป มหาชัย | 2025-05-20 | 2025-12-07 |
| prj_037 | ฟาร์มท่าจะหลุง | 2026-01-15 | 2026-07-05 |
| prj_038 | ฟาร์มไก่พันธุ์ กุดจิก | 2025-10-15 | 2026-04-11 |
| prj_039 | ฟาร์มไก่พันธุ์ เกษมทรัพย์1 | 2025-10-15 | 2026-04-04 |
| prj_040 | ฟาร์มไก่พันธุ์ เกษมทรัพย์2 | 2025-10-07 | 2026-04-03 |
| prj_041 | ฟาร์มไก่พันธุ์ โกรกหว้า1 | 2025-10-01 | 2026-04-04 |
| prj_042 | ฟาร์มไก่พันธุ์ โกรกหว้า2 | 2025-10-10 | 2026-04-06 |
| prj_043 | ฟาร์มไก่พันธุ์ โกรกหว้า3 | 2025-10-15 | 2026-05-05 |
| prj_044 | ฟาร์มไก่พันธุ์ โกรกหว้า4 | 2026-03-01 | 2026-08-19 |
| prj_045 | ฟาร์มไก่พันธุ์ ธนัฐบดี | 2026-07-01 | 2026-11-19 |
| prj_046 | ฟาร์มไก่พันธุ์ พรหมราช6 | 2025-10-15 | 2026-04-11 |
| prj_047 | ฟาร์มไก่พันธุ์ พรหมราช7 | 2025-10-15 | 2026-04-04 |
| prj_048 | ฟาร์มไก่พันธุ์ ลาดบัวขาว1 | 2025-07-20 | 2026-01-07 |
| prj_049 | ฟาร์มไก่พันธุ์ ลาดบัวขาว2 | 2026-01-17 | 2026-07-07 |
| prj_050 | ฟาร์มไก่พันธุ์ อุดมทรัพย์ | 2025-09-01 | 2026-02-26 |
| prj_051 | ฟาร์มสุกรพันธุ์ชุมพวง | 2025-10-15 | 2026-04-04 |
| prj_052 | ฟาร์มไก่พันธุ์ ปักธงชัย1 | 2025-10-15 | 2026-04-11 |
| prj_053 | ฟาร์มไก่พันธุ์ วังโรงใหญ่ | 2025-07-20 | 2026-01-14 |
| prj_054 | ฟาร์มสุกรพันธุ์โชคชัย | 2025-10-15 | 2026-04-04 |
| prj_055 | ฟาร์มไก่พันธุ์ สีคิ้ว | 2025-07-20 | 2026-01-14 |
| prj_056 | โรงงานไก่ย่างห้าดาวโคราช (กำลังก่อสร้าง)-2567 | 2025-07-01 | 2025-12-19 |
| prj_057 | โรงงานแปรรูปเนื้อไก่โคราช3 | 2026-07-01 | 2027-03-27 |
| prj_058 | ฟาร์มปู่ย่าพันธุ์ ชัยภูมิ5 | 2025-07-20 | 2026-01-07 |
| prj_059 | ฟาร์มสุกรพันธุ์รัตภูมิ 1 | 2025-08-01 | 2026-01-19 |
| prj_060 | ฟาร์มไก่พันธุ์แสงทอง | 2025-07-20 | 2026-01-14 |
| prj_061 | ฟาร์มปู่ย่าพันธุ์ เขาตําบล | 2025-07-20 | 2026-01-07 |
| prj_062 | ฟาร์มสุกรพันธุ์บ่อทอง | 2025-08-10 | 2025-12-29 |
| prj_063 | ฟาร์มสุกรพันธุ์สุพรรณบุรี | 2025-08-10 | 2026-02-04 |
| prj_064 | ฟาร์มสุกรขุนโคกตูม | 2025-08-10 | 2026-01-28 |
| prj_065 | ฟาร์มสุกรพันธุ์นครนายก | 2025-08-10 | 2026-01-28 |
| prj_066 | ฟาร์มหนองบัว | 2025-08-01 | 2026-01-26 |
| prj_067 | ฟาร์มสุกรพันธุ์ป่าบอน 1 | 2025-08-01 | 2025-12-20 |
| prj_068 | ฟาร์มสุกรสุโขทัย | 2025-07-20 | 2025-12-08 |
| prj_069 | ฟาร์มสุกรพันธุ์พิษณุโลก 1 | 2025-07-20 | 2025-12-08 |
| prj_070 | ฟาร์มสุกรลาดตะเคียน | 2025-07-20 | 2025-12-08 |

| ID | Task | Start | Finish |
| --- | --- | --- | --- |
| prj_071 | ฟาร์มปู่ย่าพันธุ์ โคกตูม | 2025-10-15 | 2026-04-04 |
| prj_072 | ฟาร์มเป็ดพันธุ์บัวชุม | 2025-10-15 | 2026-03-05 |
| prj_073 | ฟาร์มสุกรขุนนพรัตน์ | 2025-10-15 | 2026-04-04 |
| prj_074 | ฟาร์มไก่พันธุ์พรหมยาม | 2025-10-15 | 2026-03-05 |
| prj_075 | ฟาร์มไก่พันธุ์สระแก้ว | 2025-10-15 | 2026-04-11 |
| prj_076 | ฟาร์มเป็ดพันธุ์วังม่วง | 2025-10-15 | 2026-04-11 |
| prj_077 | ฟาร์มสุกรขุนปรานบุรี 2 | 2025-10-15 | 2026-04-04 |
| prj_078 | ฟาร์มสุกรพันธุ์บ้านหมี่ | 2025-10-15 | 2026-04-04 |
| prj_079 | ฟาร์มสุกรพันธุ์บุรีรัมย์ | 2025-10-15 | 2026-04-04 |
| prj_080 | ฟาร์มไก่พันธุ์ลาดตะเคียน1 | 2025-10-15 | 2026-04-04 |
| prj_081 | ฟาร์มพะเยา | 2025-10-15 | 2026-04-11 |
| prj_082 | ฟาร์มสุกรขุนไร่สาม | 2025-10-15 | 2026-04-11 |
| prj_083 | ฟาร์มสุกรพระพุทธบาท | 2025-10-15 | 2026-04-04 |
| prj_084 | ฟาร์มสุกรพันธุ์บ่อพลอย | 2025-10-15 | 2026-04-04 |
| prj_085 | ฟาร์มสุกรพันธุ์ยโสธร | 2025-10-15 | 2026-04-04 |
| prj_086 | ฟาร์มสุกรพันธุ์สุรินทร์ | 2025-10-15 | 2026-04-04 |
| prj_087 | ฟาร์มเขาสมโภชน์ | 2025-10-15 | 2026-03-05 |
| prj_088 | ฟาร์มสุกรพันธุ์โคกอุดม | 2025-10-15 | 2026-03-05 |
| prj_089 | ฟาร์มสุกรพันธุ์ราชบุรี | 2025-10-15 | 2026-03-05 |
| prj_090 | ฟาร์มสุกรพันธุ์อำนาจเจริญ | 2025-10-15 | 2026-03-05 |
| prj_091 | ฟาร์มสุกรอู่ทอง | 2025-10-15 | 2026-03-05 |
| prj_092 | ฟาร์มสุราษฎร์ธานี (กำหนดฟาร์มสร้างเสร็จ เดือน 6-68) | 2025-10-15 | 2026-03-05 |
| prj_093 | ฟาร์มอุตรดิตถ์ | 2025-10-15 | 2026-03-05 |
| prj_094 | ฟาร์มสุกรพันธุ์อุดมสุข | 2025-10-15 | 2026-03-05 |
| prj_095 | ฟาร์มสุกรสระบัว | 2025-10-15 | 2026-03-05 |
| prj_096 | ฟาร์มสุกรจอมทอง | 2025-10-15 | 2026-03-05 |
| prj_097 | ฟาร์มไก่พันธุ์เขาไม้แก้ว1 | 2025-10-15 | 2026-03-12 |
| prj_098 | โรงงานแปรรูปมีนบุรี1 | 2025-10-15 | 2026-04-18 |
| prj_099 | โรงงานอาหารสัตว์ราชบุรี | 2025-10-15 | 2026-05-27 |
| prj_100 | โรงชำแหละสุกรศรีษะเกษ | 2025-10-15 | 2026-05-27 |
| prj_101 | ฟาร์มเตรียมทดแทนเขาไร่ | 2026-05-01 | 2026-09-19 |
| prj_102 | ฟาร์มปู่ย่าพันธุ์ ชัยภูมิ1 | 2026-02-01 | 2026-07-22 |
| prj_103 | ฟาร์มสุกรขุนน้ำใส 2 | 2026-06-01 | 2026-11-19 |
| prj_104 | ฟาร์มสุกรพันธุ์กำแพงเพชร 1 | 2026-03-01 | 2026-08-26 |
| prj_105 | ฟาร์มสุกรบ้านเขว้า | 2026-05-01 | 2026-09-19 |
| prj_106 | ฟาร์มสุกรพันธุ์วัดโบสถ์ | 2026-05-01 | 2026-10-26 |
| prj_107 | ฟาร์มสุกรพันธุ์สกลนคร | 2026-06-01 | 2026-11-19 |
| prj_108 | ฟาร์มไก่พันธุ์ลาดตะเคียน2 | 2026-03-01 | 2026-08-19 |
| prj_109 | ฟาร์มวิเชียรบุรี | 2026-05-01 | 2026-10-04 |
| prj_110 | ฟาร์มสุกรขุนคอนสวรรค์ | 2026-02-01 | 2026-07-22 |
| prj_111 | ฟาร์มสุกรชัยภูมิ | 2026-02-01 | 2026-07-22 |
| prj_112 | ฟาร์มสุกรพันธุ์ศรีมงคล | 2026-02-01 | 2026-06-22 |
| prj_113 | ฟาร์มสุกรภูแลนคา | 2026-02-01 | 2026-06-22 |
| prj_114 | ฟาร์มสุกรแสลงพัน | 2026-05-01 | 2026-09-19 |
| prj_115 | ฟาร์มสุกรขอนแก่น (มัญจาคีรี) | 2026-02-01 | 2026-06-22 |
| prj_116 | โรงงานแปรรูปกุ้งระโนด เฟส 2 | 2026-05-01 | 2026-11-02 |
| prj_117 | ศูนย์ปรับปรุงพันธุ์กรรมกุ้งปะทิว | 2025-12-26 | 2026-10-05 |
| prj_118 | ฟาร์มกำแพงเพชร 2 | 2026-07-01 | 2026-12-04 |
| prj_119 | ฟาร์มสุกรขุนกบินทร์บุรี | 2026-07-01 | 2027-01-02 |
| prj_120 | ฟาร์มสุกรขุนซับใหญ่ | 2026-07-01 | 2027-01-02 |
| prj_121 | ฟาร์มสุกรขุนระยอง 2 | 2026-07-01 | 2026-12-04 |
| prj_122 | ฟาร์มสุกรขุนหมอนนาง | 2026-07-01 | 2027-01-02 |
| prj_123 | ฟาร์มสุกรพันธุ์ปราจีนบุรี 1 | 2026-07-01 | 2027-01-02 |
| prj_124 | โรงงานชำแหละไก่ลำปาง-2 | 2026-04-18 | 2026-09-06 |
| prj_125 | ฟาร์มสุกรขุนจันทบุรี 2 | 2026-06-15 | 2027-01-01 |
| prj_126 | โรงชำแหละสุกรกาญจนบุรี | 2026-04-01 | 2026-09-04 |
| prj_127 | โรงงานแปรรูปเนื้อไก่สระบุรี | 2026-07-01 | 2026-11-19 |
| prj_128 | โรงงานอาหารสัตว์บกธารเกษม | 2026-07-01 | 2026-12-03 |
| prj_129 | ฟาร์มแม่กลอง1 | 2026-09-01 | 2027-02-03 |
| prj_130 | โรงชำแหละสุกรห้วยส้ม | 2026-10-01 | 2027-03-05 |
| prj_131 | โรงอาหารสัตว์ท่าเรือ | 2026-10-01 | 2027-03-05 |
| prj_132 | โรงอาหารสัตว์ปักธงชัย | 2026-10-01 | 2027-03-05 |
| prj_133 | ฟาร์มสุกรศิลาทิพย์ | 2026-10-01 | 2027-03-05 |
| prj_134 | ฟาร์มไก่กระทงโพธ์งาม | 2026-10-01 | 2027-03-05 |
| prj_135 | โรงงานแปรรูปสัตว์น้ำแกลง | 2026-10-01 | 2027-03-05 |
| prj_136 | ฟาร์มสุกรพนัสนิคม | 2026-10-01 | 2027-03-05 |
| prj_137 | อสร.หนองจอก | 2026-10-01 | 2027-03-05 |

## Version 2 (saved 2026-10-04)

Last finish stays 2027-03-27.

Added:

| ID | Task | Start | Finish |
| --- | --- | --- | --- |
| prj_141 | TEST_LIVE_VERIFY_2026 | 2026-09-23 | 2026-12-22 |
| prj_142 | TEST_GET_NAME | 2026-09-23 | 2026-12-22 |
| prj_143 | ไซต์งานทดสอบ KPG-Solar 01 | 2026-04-01 | 2026-07-31 |
| prj_144 | KPG TESTจต | 2026-10-04 | 2027-01-02 |

Removed: prj_016 โรงงานอาหาร แปรรูปเนื้อเป็ด-ไก่ บางนา

## Version 3 (saved 2026-10-04)

Last finish stays 2027-03-27.

Removed: prj_141 TEST_LIVE_VERIFY_2026; prj_142 TEST_GET_NAME; prj_143 ไซต์งานทดสอบ KPG-Solar 01; prj_144 KPG TESTจต
